# 222

Schedule from MS Project, 2019-09-02 to 2019-12-06, 2 hours a day, costs in ₫, A marks actual dates.

## Calendars

- Standard: Mon-Fri 19:00-20:00, 20:30-21:30; Sat-Sun off.

## Resources

| Resource | Rate |
| --- | --- |
| Trần Đình Hà | 25000 |
| Trần Thị Phương Dung | 25000 |
| Nguyễn Thành Kiêm | 25000 |
| Ngô Hữu Hải | 25000 |
| Nguyễn Nhật Trí | 25000 |

## Schedule

| ID | WBS | Task | Type | Duration | Start | Finish | Predecessors | Complete | Remaining | Baseline start | Baseline finish | Constraint | Resources | Work | Actual work | Cost | Actual cost | Ghi chú |
| --- | --- | --- | --- | --- | --- | --- | --- | --- | --- | --- | --- | --- | --- | --- | --- | --- | --- | --- |
| 1 | 1 | **1. Khởi tạo** |  | 18h | 2019-09-02 A | 2019-09-12 A |  | 100% |  | 2019-09-02 | 2019-09-12 | start no earlier than 2019-09-02 |  | 26h | 26h | 650,000 | 650,000 | NA |
| 2 | 1.1 | 1.1 Lựa chọn dự án (dự án Xây dựng hệ thống ERP phân hệ nhân sự cho khách sạn Trang Ngân ) | manual | 4h | 2019-09-02 A | 2019-09-03 A |  | 100% |  | 2019-09-02 | 2019-09-03 | start no earlier than 2019-09-02 | Trần Đình Hà | 4h | 4h | 100,000 | 100,000 | NA |
| 3 | 1.2 | 1.2 Phê duyệt dự án | manual | 4h | 2019-09-04 A | 2019-09-05 A | 2 | 100% |  | 2019-10-04 | 2019-10-05 | start no earlier than 2019-09-04 | Ngô Hữu Hải | 4h | 4h | 100,000 | 100,000 | NA |
| 4 | 1.3 | 1.3 Phát triển hiến chương dự án ( project charter ) | manual | 4h | 2019-09-06 A | 2019-09-09 A | 3 | 100% |  | 2019-09-06 | 2019-09-09 | start no earlier than 2019-09-06 | Ngô Hữu Hải | 4h | 4h | 100,000 | 100,000 | NA |
| 5 | 1.4 | 1.4 Họp khởi công | manual | 2h | 2019-09-10 A | 2019-09-10 A | 4 | 100% |  | 2019-09-10 | 2019-09-10 | start no earlier than 2019-09-10 | Ngô Hữu Hải; Nguyễn Nhật Trí; Nguyễn Thành Kiêm; Trần Đình Hà; Trần Thị Phương Dung | 10h | 10h | 250,000 | 250,000 | NA |
| 6 | 1.5 | 1.5 Chọn người quản lí dự án + tìm kiếm thành viên | manual | 4h | 2019-09-11 A | 2019-09-12 A | 5 | 100% |  | 2019-09-11 | 2019-09-12 | start no earlier than 2019-09-11 | Trần Thị Phương Dung | 4h | 4h | 100,000 | 100,000 | NA |
| 7 | 2 | **2. Lập kế hoạch** |  | 38h | 2019-09-13 A | 2019-10-09 A | 1 | 100% |  | 2019-09-13 | 2019-10-09 | start no earlier than 2019-09-13 |  | 38h | 38h | 950,000 | 950,000 | NA |
| 8 | 2.1 | 2.1 Bảng phân công công việc | manual | 4h | 2019-09-13 A | 2019-09-16 A | 6 | 100% |  | 2019-09-13 | 2019-09-16 | start no earlier than 2019-09-13 | Ngô Hữu Hải | 4h | 4h | 100,000 | 100,000 | NA |
| 9 | 2.2 | 2.2 Lập kế hoạch dự án |  | 10h | 2019-09-17 A | 2019-09-23 A | 8 | 100% |  | 2019-09-17 | 2019-09-23 | start no earlier than 2019-09-17 | Nguyễn Nhật Trí | 10h | 10h | 250,000 | 250,000 | NA |
| 10 | 2.3 | 2.3 Tìm kiếm nguồn lực |  | 22h | 2019-09-24 A | 2019-10-08 A | 9 | 100% |  | 2019-09-24 | 2019-10-09 | start no earlier than 2019-09-23 | Trần Thị Phương Dung | 22h | 22h | 550,000 | 550,000 | NA |
| 11 | 2.4 | 2.4 Xác định chi phí, rủi ro dự án |  | 2h | 2019-10-09 A | 2019-10-09 A | 10 | 100% |  | 2019-10-09 | 2019-10-09 | start no earlier than 2019-10-08 | Ngô Hữu Hải | 2h | 2h | 50,000 | 50,000 | NA |
| 12 | 3 | **3. Thực hiện** |  | 64h | 2019-10-10 A | 2019-11-22 | 7 | 96% | 2.78h | 2019-10-10 | 2019-11-17 | start no earlier than 2019-10-10 |  | 106h | 101.4h | 2,650,000 | 2,535,000 | NA |
| 13 | 3.1 | 3.1 Khảo sát | manual | 8h? | 2019-10-10 A | 2019-10-15 A | 11 | 100% |  | 2019-10-10 | 2019-10-15 | finish no earlier than 2019-10-15 | Ngô Hữu Hải | 8h | 8h | 200,000 | 200,000 | NA |
| 14 | 3.2 | 3.2 Phân tích hệ thống | manual | 12h | 2019-10-16 A | 2019-10-23 A | 13 | 100% |  | 2019-10-16 | 2019-10-23 | start no earlier than 2019-10-16 | Trần Thị Phương Dung | 12h | 12h | 300,000 | 300,000 | NA |
| 15 | 3.3 | 3.3 Triển khai Chức năng quản lý hồ sơ nhân viên | manual | 40h | 2019-10-23 A | 2019-11-19 | 14 | 94% | 2.3h | 2019-10-24 | 2019-11-17 | start no earlier than 2019-10-23 | Nguyễn Thành Kiêm | 40h | 37.7h | 1,000,000 | 942,500 | NA |
| 16 | 3.4 | 3.4 Triển khai chức năng quản lý chấm công | manual | 20h | 2019-10-23 A | 2019-11-05 A | 14, 15SS | 100% |  | 2019-11-24 | 2019-11-05 | start no earlier than 2019-10-23 | Nguyễn Nhật Trí | 20h | 20h | 500,000 | 500,000 | NA |
| 17 | 3.5 | 3.5 Triển khai chức năng quản lý tiền lương | manual | 20h | 2019-11-06 A | 2019-11-19 | 16 | 89% | 2.3h | 2019-11-06 | 2019-11-14 | start no earlier than 2019-11-06 | Ngô Hữu Hải | 20h | 17.7h | 500,000 | 442,500 | NA |
| 18 | 3.6 | 3.6 Kiểm thử hệ thống | manual | 6h | 2019-11-20 A | 2019-11-22 A | 17 | 100% |  | 2019-11-15 | 2019-11-19 | start no earlier than 2019-11-20 | Nguyễn Nhật Trí | 6h | 6h | 150,000 | 150,000 | NA |
| 19 | 4 | **4. Giám sát và kiểm soát** |  | 74h | 2019-10-10 A | 2019-11-29 | 12SS | 83% | 12.78h | 2019-10-10 |  | start no earlier than 2019-10-10 |  | 74h | 61.22h | 1,850,000 | 1,530,500 | NA |
| 20 | 4.1 | 4.1 Giám sát tiến độ | manual | 64h | 2019-10-10 A | 2019-11-22 | 13SS | 96% | 2.78h | 2019-10-10 | 2019-11-19 | start no earlier than 2019-10-10 | Trần Đình Hà | 64h | 61.22h | 1,600,000 | 1,530,500 | NA |
| 21 | 4.2 | 4.2 Kiểm soát thay đổi của hệ thống | manual | 4h | 2019-11-25 | 2019-11-26 | 20, 18 |  |  |  |  | start no earlier than 2019-11-25 | Trần Thị Phương Dung | 4h |  | 100,000 |  | NA |
| 22 | 4.3 | 4.3 Kiểm tra chất lượng hệ thống | manual | 6h | 2019-11-27 | 2019-11-29 | 21 |  |  |  |  | start no earlier than 2019-11-27 | Trần Thị Phương Dung | 6h |  | 150,000 |  | NA |
| 23 | 5 | **5. Đóng dự án** |  | 10h | 2019-12-02 | 2019-12-06 | 19 |  |  |  |  | start no earlier than 2019-12-02 |  | 10h |  | 250,000 |  | NA |
| 24 | 5.1 | 5.1 Báo cáo kết quả | manual | 2h | 2019-12-02 | 2019-12-02 | 22 |  |  |  |  | start no earlier than 2019-12-02 | Ngô Hữu Hải | 2h |  | 50,000 |  | NA |
| 25 | 5.2 | 5.2 Bài học kinh nghiệm | manual | 4h | 2019-12-03 | 2019-12-04 | 24 |  |  |  |  | start no earlier than 2019-12-03 | Nguyễn Thành Kiêm | 4h |  | 100,000 |  | NA |
| 26 | 5.3 | 5.3 Lưu tài liệu dự án | manual | 2h | 2019-12-05 | 2019-12-05 | 25 |  |  |  |  | start no earlier than 2019-12-04 | Nguyễn Nhật Trí | 2h |  | 50,000 |  | NA |
| 27 | 5.4 | 5.4 Thanh toán mọi chi phí tồn | manual | 2h | 2019-12-06 | 2019-12-06 | 26 |  |  |  |  | start no earlier than 2019-12-05 | Nguyễn Nhật Trí | 2h |  | 50,000 |  | NA |
